# Programación de Tareas

Schedule from MS Project, 2020-09-04 to 2020-12-01.

## Calendars

- Estándar: Mon-Fri 09:00-13:00, 15:00-19:00; Sat-Sun off. Exceptions (off unless hours are given): 2020-10-12, 2020-11-02, 2020-11-16.

## Resources

| Resource |
| --- |
| David Lamprea |
| Jeisson Gomez |
| Otro Desarrollador |
| Cristhopher Barreto |

## Schedule

| ID | WBS | Task | Duration | Start | Finish | Predecessors | Total slack | Free slack | Constraint | Resources | Work |
| --- | --- | --- | --- | --- | --- | --- | --- | --- | --- | --- | --- |
| 1 | 1 | **MVP** | 15d | 2020-09-04 | 2020-09-24 |  | 15d | 0d |  |  | 320h |
| 2 | 1.1 | **Waiting List** | 5.5d | 2020-09-04 | 2020-09-11 |  | 15d |  |  |  | 72h |
| 3 | 1.1.1 | **Usuario - Formulario de registro** | 3d | 2020-09-04 | 2020-09-08 |  | 15d |  |  |  | 28h |
| 4 | 1.1.1.1 | Desarrollo de formulario para registro de usuarios y validación para edad no permitida | 2d | 2020-09-04 | 2020-09-07 |  | 15d | 0d |  | Jeisson Gomez | 16h |
| 5 | 1.1.1.2 | Desarrollo de servicio Rest para almacenar los usuarios a registrar con la validación de edad | 0.5d | 2020-09-04 | 2020-09-04 |  | 15d | 0d |  | David Lamprea | 4h |
| 6 | 1.1.1.3 | Pruebas | 1d | 2020-09-08 | 2020-09-08 | 4, 5 | 51.5d |  |  | Cristhopher Barreto | 8h |
| 7 | 1.1.2 | **Usuario - Age gate** | 3d | 2020-09-08 | 2020-09-10 |  | 15d |  |  |  | 24h |
| 8 | 1.1.2.1 | Desarrollo de componente que permita ingresar la fecha de nacimiento validando la mayoría de edad para poder continuar a la pagina | 2d | 2020-09-08 | 2020-09-09 | 4 | 15d | 0d | start no earlier than 2020-09-01 | Jeisson Gomez | 16h |
| 9 | 1.1.2.2 | Pruebas | 1d | 2020-09-10 | 2020-09-10 | 8 | 46.5d | 0d |  | Cristhopher Barreto | 8h |
| 10 | 1.1.3 | **Usuario - Codigo Captcha** | 2d | 2020-09-09 | 2020-09-11 |  | 15d |  |  |  | 20h |
| 11 | 1.1.3.1 | Implementacion codigo Captcha front | 1d | 2020-09-10 | 2020-09-10 | 8 | 15d | 0d |  | Jeisson Gomez | 8h |
| 12 | 1.1.3.2 | Implementacion codigo captcha back | 1d | 2020-09-09 | 2020-09-10 | 18 | 15d | 0d |  | David Lamprea | 8h |
| 13 | 1.1.3.3 | Pruebas | 0.5d | 2020-09-11 | 2020-09-11 | 9, 11, 12 | 46.5d | 0d |  | Cristhopher Barreto | 4h |
| 14 | 1.2 | **Waiting List - Administrativo** | 7.5d | 2020-09-04 | 2020-09-15 |  | 15d |  |  |  | 52h |
| 15 | 1.2.1 | **Administrativo - Formulario de activación de usuarios en espera** | 7.5d | 2020-09-04 | 2020-09-15 |  | 15d |  |  |  | 52h |
| 16 | 1.2.1.1 | Desarrollo de formulario para activar usuarios | 1.5d | 2020-09-11 | 2020-09-14 | 13 | 46.5d | 0d | start no earlier than 2020-09-02 | Cristhopher Barreto | 12h |
| 17 | 1.2.1.2 | Desarrollo de servicio rest para consultar los usuarios registrados | 1d | 2020-09-04 | 2020-09-07 | 5 | 15d | 0d | start no earlier than 2020-08-31 | David Lamprea | 8h |
| 18 | 1.2.1.3 | Desarrollo de activación de usuarios y gestor de correo, envió de correos electrónicos masivos | 2d | 2020-09-07 | 2020-09-09 | 17 | 15d | 0d | start no earlier than 2020-09-01 | David Lamprea | 16h |
| 19 | 1.2.1.4 | Desarrollo código generación de códigos de acceso | 1d | 2020-09-10 | 2020-09-11 | 12 | 15d | 0d | start no earlier than 2020-09-02 | David Lamprea | 8h |
| 20 | 1.2.1.5 | Pruebas | 1d | 2020-09-15 | 2020-09-15 | 16 | 46.5d |  |  | Cristhopher Barreto | 8h |
| 21 | 1.3 | **Login y Registro** | 7d | 2020-09-11 | 2020-09-21 |  | 15d |  |  |  | 104h |
| 22 | 1.3.1 | **Usuario - Registro de usuarios** | 1.5d | 2020-09-11 | 2020-09-14 |  | 15d |  |  |  | 16h |
| 23 | 1.3.1.1 | Pantalla de registro de usuarios | 1d | 2020-09-11 | 2020-09-11 | 11 | 15d | 0d |  | Jeisson Gomez | 8h |
| 24 | 1.3.1.2 | Servicio para registrar datos de usuario en el modulo de usuarios de drupal con roll de cliente | 1d | 2020-09-11 | 2020-09-14 | 19 | 15d | 0d |  | David Lamprea | 8h |

| ID | WBS | Task | Duration | Start | Finish | Predecessors | Total slack | Free slack | Resources | Work |
| --- | --- | --- | --- | --- | --- | --- | --- | --- | --- | --- |
| 25 | 1.3.2 | **Login** | 4d | 2020-09-14 | 2020-09-17 |  | 15d |  |  | 40h |
| 26 | 1.3.2.1 | **Usuario - Login con Facebook** | 1d | 2020-09-14 | 2020-09-14 |  | 15d | 1d |  | 8h |
| 27 | 1.3.2.1.1 | Botón de inicio de sesión con Facebook | 0.5d | 2020-09-14 | 2020-09-14 | 23 | 15d | 0d | Jeisson Gomez | 4h |
| 28 | 1.3.2.1.2 | Servicio validación con Facebook | 0.5d | 2020-09-14 | 2020-09-14 | 24 | 15d | 0d | David Lamprea | 4h |
| 29 | 1.3.2.2 | **Usuario - Login** | 1d | 2020-09-14 | 2020-09-15 |  | 15d | 0.5d |  | 8h |
| 30 | 1.3.2.2.1 | Desarrollo de servicio rest para consultar las credenciales de usuario y retorno de estado miembro activo | 0.5d | 2020-09-14 | 2020-09-14 | 27 | 15d | 0d | Jeisson Gomez | 4h |
| 31 | 1.3.2.2.2 | Desarrollo pantalla para el ingreso de datos para inicio de sesión | 0.5d | 2020-09-15 | 2020-09-15 | 28 | 15d | 0d | David Lamprea | 4h |
| 32 | 1.3.2.3 | **Usuario - Login con Google** | 1d | 2020-09-15 | 2020-09-15 |  | 15d | 0d |  | 8h |
| 33 | 1.3.2.3.1 | Botón de inicio de sesión con google | 0.5d | 2020-09-15 | 2020-09-15 | 30 | 15d | 0d | Jeisson Gomez | 4h |
| 34 | 1.3.2.3.2 | Servicio validación con Google | 0.5d | 2020-09-15 | 2020-09-15 | 31 | 15d | 0d | David Lamprea | 4h |
| 35 | 1.3.2.4 | Pruebas | 2d | 2020-09-16 | 2020-09-17 | 26, 29, 32 | 39.5d | 0d | Cristhopher Barreto | 16h |
| 36 | 1.3.3 | **Usuario - Recuperar contraseña** | 1.5d | 2020-09-15 | 2020-09-16 |  | 15d |  |  | 16h |
| 37 | 1.3.3.1 | Desarrollo de componente que permita la recuperación de contraseña | 1d | 2020-09-15 | 2020-09-16 | 33 | 15d | 0d | Jeisson Gomez | 8h |
| 38 | 1.3.3.2 | Desarrollo de servicio rest que permita recuperar contraseña | 1d | 2020-09-16 | 2020-09-16 | 34 | 15d | 0d | David Lamprea | 8h |
| 39 | 1.3.4 | Pruebas | 1d | 2020-09-18 | 2020-09-18 | 38, 37, 35 | 39.5d | 0d | Cristhopher Barreto | 8h |
| 40 | 1.3.5 | **Administrativo - Integración con directorio activo** | 1.5d | 2020-09-16 | 2020-09-17 |  | 15d |  |  | 16h |
| 41 | 1.3.5.1 | Desarrollo servicio que consulte el directorio activo con el nombre de usuario y password. Rol | 1d | 2020-09-16 | 2020-09-17 | 37 | 15d | 0d | Jeisson Gomez | 8h |
| 42 | 1.3.5.2 | Desarrollo modulo para acceso de la pantalla administrativo | 1d | 2020-09-17 | 2020-09-17 | 38 | 15d | 0d | David Lamprea | 8h |
| 43 | 1.3.6 | Pruebas | 1d | 2020-09-21 | 2020-09-21 | 39, 41, 42 | 39.5d | 0d | Cristhopher Barreto | 8h |
| 44 | 1.4 | **Perfil de usuario** | 5.5d | 2020-09-17 | 2020-09-24 |  | 15d |  |  | 92h |
| 45 | 1.4.1 | **Usuario - Verificación usuario Miembro activo** | 3d | 2020-09-17 | 2020-09-22 |  | 15d |  |  | 8h |
| 46 | 1.4.1.1 | componente que permita visualizar el estado de miembro activo | 0.5d | 2020-09-17 | 2020-09-17 | 41 | 15d | 0d | Jeisson Gomez | 4h |
| 47 | 1.4.1.2 | Pruebas | 0.5d | 2020-09-22 | 2020-09-22 | 46, 43 | 39.5d | 0d | Cristhopher Barreto | 4h |
| 48 | 1.4.2 | **Usuario - Cambio de contraseña** | 3d | 2020-09-18 | 2020-09-22 |  | 15d |  |  | 16h |
| 49 | 1.4.2.1 | Desarrollo de componente que permita realizar el cambio de la contraseña | 1d | 2020-09-18 | 2020-09-18 | 46 | 15d | 0d | Jeisson Gomez | 8h |
| 50 | 1.4.2.2 | Desarrollo de servicio rest que permita actualizar la contraseña del usuario | 0.5d | 2020-09-18 | 2020-09-18 | 42 | 15d | 0d | David Lamprea | 4h |
| 51 | 1.4.2.3 | Pruebas | 0.5d | 2020-09-22 | 2020-09-22 | 47, 49, 50 | 39.5d | 0d | Cristhopher Barreto | 4h |

| ID | WBS | Task | Type | Duration | Start | Finish | Predecessors | Total slack | Free slack | Constraint | Resources | Work |
| --- | --- | --- | --- | --- | --- | --- | --- | --- | --- | --- | --- | --- |
| 52 | 1.4.3 | **Usuario - Datos de contacto** |  | 3.5d | 2020-09-18 | 2020-09-23 |  | 15d |  |  |  | 40h |
| 53 | 1.4.3.1 | Desarrollo de modulo que permita visualizar la información básica del usuario y formulario de actualización de datos |  | 2d | 2020-09-21 | 2020-09-22 | 49 | 15d | 0d | start no earlier than 2020-09-11 | Jeisson Gomez | 16h |
| 54 | 1.4.3.2 | Desarrollo servicio rest para consulta de datos personales |  | 1d | 2020-09-18 | 2020-09-21 | 50 | 15d | 0d |  | David Lamprea | 8h |
| 55 | 1.4.3.3 | Desarrollo de servicio rest para actualización de datos personales |  | 1d | 2020-09-21 | 2020-09-22 | 54 | 15d | 0d |  | David Lamprea | 8h |
| 56 | 1.4.3.4 | Pruebas |  | 1d | 2020-09-23 | 2020-09-23 | 51, 53, 54, 55 | 39.5d | 0d |  | Cristhopher Barreto | 8h |
| 57 | 1.4.4 | **Experiencias** |  | 2.5d | 2020-09-22 | 2020-09-24 |  | 15d |  |  |  | 28h |
| 58 | 1.4.4.1 | **Usuario - Listado de experiencias activas** |  | 1.5d | 2020-09-22 | 2020-09-23 |  | 15d |  |  |  | 20h |
| 59 | 1.4.4.1.1 | Desarrollo de modulo para mostrar las experiencias activas y formulario de inscripción |  | 1d | 2020-09-23 | 2020-09-23 | 53 | 15d | 0d |  | Jeisson Gomez | 8h |
| 60 | 1.4.4.1.2 | Desarrollo de servicio rest para consultar las experiencias activas |  | 0.5d | 2020-09-22 | 2020-09-22 | 55 | 15d | 0d |  | David Lamprea | 4h |
| 61 | 1.4.4.1.3 | Desarrollo de servicio rest para registro de datos de usuario para experiencias |  | 1d | 2020-09-23 | 2020-09-23 | 60 | 15d | 0d |  | David Lamprea | 8h |
| 62 | 1.4.4.2 | Pruebas |  | 1d | 2020-09-24 | 2020-09-24 | 60, 56, 59, 61 | 39.5d |  |  | Cristhopher Barreto | 8h |
| 63 | 2 | **Pruebas** |  | 4d | 2020-09-25 | 2020-09-30 |  | 40.5d |  |  |  | 32h |
| 64 | 2.1 | Pruebas del MVP |  | 4d | 2020-09-25 | 2020-09-30 | 1 | 40.5d |  |  | Cristhopher Barreto | 32h |
| 65 | 3 | **Documentación MVP** |  | 3d | 2020-09-25 | 2020-09-29 | 1 | 41.5d |  |  |  |  |
| 66 | 3.1 | Documentación de entrega MVP |  | 3d | 2020-09-25 | 2020-09-29 |  | 41.5d |  |  |  |  |
| 67 | 4 | **Soporte MVP** |  | 5d | 2020-09-25 | 2020-10-01 |  | 39.5d |  |  |  |  |
| 68 | 4.1 | Soporte de despliegue y Bugs |  | 5d | 2020-09-25 | 2020-10-01 | 1 | 39.5d |  |  |  |  |
| 69 | 5 | **WEB APP** |  | 23.5d | 2020-10-15 | 2020-11-19 |  |  |  |  |  | 504h |
| 70 | 5.1 | **Experiencias** |  | 5d | 2020-10-15 | 2020-10-21 |  | 0d |  |  |  | 108h |
| 71 | 5.1.1 | **Usuario - Histórico de experiencias aplicadas** |  | 1d | 2020-10-15 | 2020-10-15 |  | 0d |  |  |  | 8h |
| 72 | 5.1.1.1 | Desarrollo de modulo que muestre las experiencias aplicadas por el usuario registrado |  | 0.5d | 2020-10-15 | 2020-10-15 | 59 | 1d | 0d |  | Jeisson Gomez | 4h |
| 73 | 5.1.1.2 | Desarrollo de servicio rest para la consulta de experiencias aplicadas por el usuario |  | 0.5d | 2020-10-15 | 2020-10-15 | 72 | 1d | 0d |  | Jeisson Gomez | 4h |
| 74 | 5.1.1.3 | Pruebas | manual | 1d? | 2020-10-15 | 2020-10-15 |  |  |  |  |  |  |
| 75 | 5.1.2 | **Usuario - Georreferenciación para eventos** |  | 1.5d | 2020-10-15 | 2020-10-16 |  | 0d |  |  |  | 20h |
| 76 | 5.1.2.1 | Desarrollo de modulo que permita mostrar la geolocalización configurada para el evento |  | 1d | 2020-10-15 | 2020-10-15 | 60 | 5.5d | 0d |  | David Lamprea | 8h |
| 77 | 5.1.2.2 | Desarrollo servicio rest para consultar los eventos activos y su georreferenciación |  | 1.5d | 2020-10-15 | 2020-10-16 | 61 | 1d | 0d |  | Cristhopher Barreto | 12h |
| 78 | 5.1.2.3 | Pruebas | manual | 1d? | 2020-10-15 | 2020-10-15 |  |  |  |  |  |  |

| ID | WBS | Task | Type | Duration | Start | Finish | Predecessors | Total slack | Free slack | Resources | Work |
| --- | --- | --- | --- | --- | --- | --- | --- | --- | --- | --- | --- |
| 79 | 5.1.3 | **Administrativo - Creación de experiencias** |  | 2d | 2020-10-16 | 2020-10-19 |  | 0d |  |  | 28h |
| 80 | 5.1.3.1 | Desarrollo pantalla con resumen de experiencias y formulario de creación de nueva experiencia |  | 2d | 2020-10-16 | 2020-10-19 | 76 | 5.5d | 0d | David Lamprea | 16h |
| 81 | 5.1.3.2 | Desarrollo de servicio rest para consultar las experiencias creadas |  | 0.5d | 2020-10-16 | 2020-10-16 | 73 | 1d | 0d | Jeisson Gomez | 4h |
| 82 | 5.1.3.3 | Desarrollo de servicio rest para creación y actualización de experiencias |  | 1d | 2020-10-16 | 2020-10-19 | 77 | 1d | 0d | Cristhopher Barreto | 8h |
| 83 | 5.1.3.4 | Pruebas | manual | 1d? | 2020-10-16 | 2020-10-16 |  |  |  |  |  |
| 84 | 5.1.4 | **Administrativo - Creación de eventos** |  | 2.5d | 2020-10-16 | 2020-10-20 |  | 0d |  |  | 28h |
| 85 | 5.1.4.1 | Desarrollo de modulo que permita la creación de eventos |  | 2d | 2020-10-19 | 2020-10-20 | 86 | 1d | 0d | Jeisson Gomez | 16h |
| 86 | 5.1.4.2 | Desarrollo de servicio rest que consulte los eventos configurados |  | 0.5d | 2020-10-16 | 2020-10-16 | 81 | 1d | 0d | Jeisson Gomez | 4h |
| 87 | 5.1.4.3 | Desarrollo de servicio rest que inserte o actualice los eventos creados |  | 1d | 2020-10-19 | 2020-10-20 | 82 | 1d | 0d | Cristhopher Barreto | 8h |
| 88 | 5.1.4.4 | Pruebas | manual | 1d? | 2020-10-16 | 2020-10-19 |  |  |  |  |  |
| 89 | 5.1.5 | **Administrativo - Configuración Georreferenciación para eventos** |  | 2d | 2020-10-20 | 2020-10-21 |  | 0d |  |  | 24h |
| 90 | 5.1.5.1 | Desarrollo de modulo que permita mostrar la geolocalización configurada para el evento |  | 1d | 2020-10-20 | 2020-10-20 | 80 | 5.5d | 0d | David Lamprea | 8h |
| 91 | 5.1.5.2 | Desarrollo de formulario que permita guardar las configuraciones coordenadas de geolocalización para los eventos |  | 1d | 2020-10-20 | 2020-10-21 | 87 | 1d | 0d | Cristhopher Barreto | 8h |
| 92 | 5.1.5.3 | Desarrollo de servicio rest que permita consultar las geolocalizaciones configuradas para el evento |  | 1d | 2020-10-21 | 2020-10-21 | 85 | 1d | 0d | Jeisson Gomez | 8h |
| 93 | 5.1.5.4 | Pruebas | manual | 1d? | 2020-10-20 | 2020-10-20 |  |  |  |  |  |
| 94 | 5.2 | **MGM** |  | 4d | 2020-10-21 | 2020-10-26 |  | 0d |  |  | 64h |
| 95 | 5.2.1 | **Usuario - Registro email de usuarios referidos (10)** |  | 2.5d | 2020-10-21 | 2020-10-23 |  | 0d |  |  | 32h |
| 96 | 5.2.1.1 | Desarrollo formulario de registros de referidos |  | 2d | 2020-10-21 | 2020-10-23 | 91 | 1d | 0d | Cristhopher Barreto | 16h |
| 97 | 5.2.1.2 | Desarrollo y Configuración de gestor de correo, envió de correos electrónicos masivos |  | 1d | 2020-10-21 | 2020-10-21 | 90 | 5.5d | 0d | David Lamprea | 8h |
| 98 | 5.2.1.3 | Desarrollo rest de consulta de usuarios ya referidos |  | 0.5d | 2020-10-22 | 2020-10-22 | 92 | 1d | 0d | Jeisson Gomez | 4h |
| 99 | 5.2.1.4 | Desarrollo generación códigos de acceso |  | 0.5d | 2020-10-22 | 2020-10-22 | 98 | 1d | 0d | Jeisson Gomez | 4h |
| 100 | 5.2.1.5 | Pruebas | manual | 1d? | 2020-10-21 | 2020-10-21 |  |  |  |  |  |
| 101 | 5.2.2 | **Usuario - Registro con código para los usuarios referidos** |  | 1d | 2020-10-22 | 2020-10-22 |  | 0d |  |  | 8h |
| 102 | 5.2.2.1 | Desarrollo modulo registro con código de usuario referido |  | 0.5d | 2020-10-22 | 2020-10-22 | 97 | 5.5d | 0d | David Lamprea | 4h |
| 103 | 5.2.2.2 | Desarrollo servicio rest para validar el código del usuario referido |  | 0.5d | 2020-10-22 | 2020-10-22 | 102 | 5.5d | 0d | David Lamprea | 4h |
| 104 | 5.2.2.3 | Pruebas | manual | 1d? | 2020-10-22 | 2020-10-22 |  |  |  |  |  |

| ID | WBS | Task | Type | Duration | Start | Finish | Predecessors | Total slack | Free slack | Resources | Work |
| --- | --- | --- | --- | --- | --- | --- | --- | --- | --- | --- | --- |
| 105 | 5.2.3 | **Administrativo - Carga de códigos Rappi** |  | 2d | 2020-10-23 | 2020-10-26 |  | 0d |  |  | 24h |
| 106 | 5.2.3.1 | Desarrollo pantalla carga de códigos Rappi |  | 2d | 2020-10-23 | 2020-10-26 | 99 | 1d | 0d | Jeisson Gomez | 16h |
| 107 | 5.2.3.2 | Desarrollo servicio rest para registrar códigos rappi |  | 1d | 2020-10-23 | 2020-10-26 | 96 | 1d | 0d | Cristhopher Barreto | 8h |
| 108 | 5.2.3.3 | Pruebas | manual | 1d? | 2020-10-23 | 2020-10-23 |  |  |  |  |  |
| 109 | 5.3 | **Experiencia platino** |  | 3.5d | 2020-10-23 | 2020-10-28 |  | 0d |  |  | 36h |
| 110 | 5.3.1 | **Usuario - Experiencia incógnita** |  | 1.5d | 2020-10-27 | 2020-10-28 |  | 0d |  |  | 12h |
| 111 | 5.3.1.1 | Desarrollo de modulo que se mostrara en cuanto se active la experiencia platino |  | 1d | 2020-10-27 | 2020-10-27 | 106 | 1d | 0d | Jeisson Gomez | 8h |
| 112 | 5.3.1.2 | Desarrollo de servicio rest para consultar experiencia platino |  | 0.5d | 2020-10-28 | 2020-10-28 | 111 | 1d | 0d | Jeisson Gomez | 4h |
| 113 | 5.3.1.3 | Pruebas | manual | 1d? | 2020-10-27 | 2020-10-27 |  |  |  |  |  |
| 114 | 5.3.2 | **Administrativo - Creación de experiencia platino y condiciones para redimir (Que usuarios)** |  | 2.5d | 2020-10-23 | 2020-10-27 |  | 0d |  |  | 24h |
| 115 | 5.3.2.1 | Desarrollo formulario para la creación de experiencias platinos por nivel |  | 2d | 2020-10-23 | 2020-10-26 | 103 | 5.5d | 0d | David Lamprea | 16h |
| 116 | 5.3.2.2 | Desarrollo de servicio rest para obtener experiencias platinos configuradas |  | 0.5d | 2020-10-26 | 2020-10-26 | 107 | 1d | 0d | Cristhopher Barreto | 4h |
| 117 | 5.3.2.3 | Desarrollo de servicio rest para insertar o actualizar experiencias planitos por nivel |  | 0.5d | 2020-10-27 | 2020-10-27 | 116 | 1d | 0d | Cristhopher Barreto | 4h |
| 118 | 5.3.2.4 | Pruebas | manual | 1d? | 2020-10-23 | 2020-10-23 |  |  |  |  |  |
| 119 | 5.4 | **Redención de códigos** |  | 4.5d | 2020-10-27 | 2020-11-03 |  | 0.5d |  |  | 56h |
| 120 | 5.4.1 | **Usuario - Formulario para redención de códigos** |  | 2d | 2020-10-28 | 2020-10-30 |  | 0d |  |  | 16h |
| 121 | 5.4.1.1 | Desarrollo de modulo para la captura de códigos a inscribir, mensaje de código usado, pregunta de tiene más códigos y confirmación de la acción |  | 1d | 2020-10-28 | 2020-10-29 | 112 | 1d | 0d | Jeisson Gomez | 8h |
| 122 | 5.4.1.2 | Desarrollo módulo de recepción de códigos y validación de código a registrar |  | 1d | 2020-10-29 | 2020-10-30 | 121 | 1d | 0d | Jeisson Gomez | 8h |
| 123 | 5.4.1.3 | Pruebas | manual | 1d? | 2020-10-28 | 2020-10-29 |  |  |  |  |  |
| 124 | 5.4.2 | **Usuario - Historial de códigos usados** |  | 1.5d | 2020-10-27 | 2020-10-28 |  | 0d |  |  | 12h |
| 125 | 5.4.2.1 | Desarrollo modulo para mostrar el historial de códigos de usuarios |  | 1d | 2020-10-27 | 2020-10-28 | 117 | 1d | 0d | Cristhopher Barreto | 8h |
| 126 | 5.4.2.2 | Desarrollo de servicio rest para consulta de códigos usados por usuario |  | 0.5d | 2020-10-28 | 2020-10-28 | 125 | 1d | 0d | Cristhopher Barreto | 4h |
| 127 | 5.4.2.3 | Pruebas | manual | 1d? | 2020-10-27 | 2020-10-28 |  |  |  |  |  |
| 128 | 5.4.3 | **Administrativo - Generación de códigos y/o carga** |  | 4.5d | 2020-10-27 | 2020-11-03 |  | 2.5d |  |  | 28h |
| 129 | 5.4.3.1 | Desarrollo formulario carga de códigos usados |  | 1.5d | 2020-10-27 | 2020-10-28 | 115 | 5.5d | 0d | David Lamprea | 12h |
| 130 | 5.4.3.2 | Desarrollo de servicio rest para consultar los códigos registrados s |  | 1d | 2020-10-29 | 2020-10-29 | 126 | 1d | 0d | Cristhopher Barreto | 8h |
| 131 | 5.4.3.3 | Desarrollo servicio rest para cargar códigos a la base de datos |  | 1d | 2020-10-30 | 2020-11-03 | 122 | 1d | 0d | Cristhopher Barreto | 8h |

| ID | WBS | Task | Type | Duration | Start | Finish | Predecessors | Total slack | Free slack | Resources | Work |
| --- | --- | --- | --- | --- | --- | --- | --- | --- | --- | --- | --- |
| 132 | 5.5 | **Auditoria** |  | 2d | 2020-10-28 | 2020-10-30 |  | 0d |  |  | 16h |
| 133 | 5.5.1 | **Registro de acciones y eventos ejecutados por el usuario** |  | 2d | 2020-10-28 | 2020-10-30 |  | 0d |  |  | 16h |
| 134 | 5.5.1.1 | Auditoria REST |  | 2d | 2020-10-28 | 2020-10-30 | 129 | 5.5d | 0d | David Lamprea | 16h |
| 135 | 5.5.1.2 | Pruebas | manual | 1d? | 2020-10-28 | 2020-10-29 |  |  |  |  |  |
| 136 | 5.6 | **Parametrizar** |  | 1d | 2020-11-03 | 2020-11-04 |  | 0d |  |  | 8h |
| 137 | 5.6.1 | Administrativo - Cantidad de intentos de registro código |  | 1d | 2020-11-03 | 2020-11-04 | 131 | 1d | 0d | Jeisson Gomez | 8h |
| 138 | 5.6.2 | Pruebas | manual | 1d? | 2020-11-03 | 2020-11-04 |  |  |  |  |  |
| 139 | 5.7 | **Notificaciones Push** |  | 5.5d | 2020-10-30 | 2020-11-09 |  | 0d |  |  | 64h |
| 140 | 5.7.1 | **Usuario - Funcionalidad de mostrar notificaciones push** |  | 4.5d | 2020-10-30 | 2020-11-06 |  | 0d |  |  | 32h |
| 141 | 5.7.1.1 | Desarrollo de función para mostrar las notificaciones Push |  | 2d | 2020-11-04 | 2020-11-06 | 137 | 1d | 0d | Jeisson Gomez | 16h |
| 142 | 5.7.1.2 | Desarrollo y/o integración con servidor de notificaciones push |  | 2d | 2020-10-30 | 2020-11-03 | 130 | 1d | 0d | Cristhopher Barreto | 16h |
| 143 | 5.7.1.3 | Pruebas | manual | 1d? | 2020-10-30 | 2020-10-30 |  |  |  |  |  |
| 144 | 5.7.2 | **Administrativo - Crear notificaciones push** |  | 5d | 2020-10-30 | 2020-11-09 |  | 0d |  |  | 32h |
| 145 | 5.7.2.1 | Desarrollo de modulo que permita la configuración de notificaciones Push |  | 2d | 2020-11-04 | 2020-11-05 | 142 | 1d | 0d | Cristhopher Barreto | 16h |
| 146 | 5.7.2.2 | Desarrollo de servicio Rest que consulte el histórico de notificaciones push enviadas |  | 1d | 2020-11-06 | 2020-11-09 | 141 | 1d | 0d | Jeisson Gomez | 8h |
| 147 | 5.7.2.3 | Desarrollo de servicio Rest para crear nueva notificación push |  | 1d | 2020-10-30 | 2020-11-03 | 134 | 5.5d | 0d | David Lamprea | 8h |
| 148 | 5.7.2.4 | Pruebas | manual | 1d? | 2020-10-30 | 2020-11-03 |  |  |  |  |  |
| 149 | 5.8 | **Integración** |  | 6.5d | 2020-11-03 | 2020-11-11 |  | 0d |  |  | 64h |
| 150 | 5.8.1 | **Usuario - Escaneo de código de barras y QR** |  | 6d | 2020-11-03 | 2020-11-11 |  | 0d |  |  | 32h |
| 151 | 5.8.1.1 | Desarrollo de modulo que permita la lectura de códigos de barra y QR |  | 2d | 2020-11-09 | 2020-11-11 | 146 | 1d | 0d | Jeisson Gomez | 16h |
| 152 | 5.8.1.2 | Servicio rest que permita cargar las imágenes de códigos de barras y códigos QR |  | 2d | 2020-11-03 | 2020-11-05 | 147 | 5.5d | 0d | David Lamprea | 16h |
| 153 | 5.8.1.3 | Pruebas | manual | 1d? | 2020-11-03 | 2020-11-04 |  |  |  |  |  |
| 154 | 5.8.2 | **Administrativo - Aprobación de imágenes** |  | 4d | 2020-11-06 | 2020-11-11 |  | 0d |  |  | 32h |
| 155 | 5.8.2.1 | Desarrollo de modulo que permita autorizar o negar las solicitudes de usuarios para los códigos |  | 2d | 2020-11-06 | 2020-11-09 | 145 | 1d | 0d | Cristhopher Barreto | 16h |
| 156 | 5.8.2.2 | Desarrollo de servicio rest que permita obtener las solicitudes de los usuarios |  | 1d | 2020-11-10 | 2020-11-10 | 155 | 1d | 0d | Cristhopher Barreto | 8h |
| 157 | 5.8.2.3 | Desarrollo de servicio rest para actualizar el estado de las solicitudes del usuario y notificación al usuario de la decisión |  | 1d | 2020-11-11 | 2020-11-11 | 156 | 1d | 0d | Cristhopher Barreto | 8h |
| 158 | 5.8.2.4 | Pruebas | manual | 1d? | 2020-11-06 | 2020-11-06 |  |  |  |  |  |

| ID | WBS | Task | Type | Duration | Start | Finish | Predecessors | Total slack | Free slack | Constraint | Resources | Work |
| --- | --- | --- | --- | --- | --- | --- | --- | --- | --- | --- | --- | --- |
| 159 | 5.9 | **Home (Banner)** |  | 8d | 2020-11-05 | 2020-11-18 |  | 0d |  |  |  | 72h |
| 160 | 5.9.1 | **Usuario - Consulta de noticias** |  | 6d | 2020-11-05 | 2020-11-13 |  | 0d |  |  |  | 24h |
| 161 | 5.9.1.1 | Desarrollo de modulo que permita mostrar un iframe de una página deseada, cambio de contenido como imágenes y videos |  | 2d | 2020-11-11 | 2020-11-13 | 151 | 1d | 0d |  | Jeisson Gomez | 16h |
| 162 | 5.9.1.2 | Desarrollo de servicio rest que contenga las noticias |  | 1d | 2020-11-05 | 2020-11-06 | 152 | 5.5d | 0d |  | David Lamprea | 8h |
| 163 | 5.9.1.3 | Pruebas | manual | 1d? | 2020-11-05 | 2020-11-06 |  |  |  |  |  |  |
| 164 | 5.9.2 | **Usuario - Consulta de contenido (Imagen, video o pagina)** |  | 2d | 2020-11-06 | 2020-11-10 |  | 0d |  |  |  | 16h |
| 165 | 5.9.2.1 | Desarrollo de modulo que permita visualizar las noticias |  | 1d | 2020-11-06 | 2020-11-09 | 162 | 5.5d | 0d |  | David Lamprea | 8h |
| 166 | 5.9.2.2 | Desarrollo servicio rest para la consulta de noticias configuradas |  | 1d | 2020-11-09 | 2020-11-10 | 165 | 5.5d | 0d |  | David Lamprea | 8h |
| 167 | 5.9.2.3 | Pruebas | manual | 1d? | 2020-11-06 | 2020-11-09 |  |  |  |  |  |  |
| 168 | 5.9.3 | **Administrativo - Actualización de noticias y contenido streaming** |  | 3.5d | 2020-11-12 | 2020-11-18 |  | 0d |  |  |  | 32h |
| 169 | 5.9.3.1 | Desarrollo de modulo que permita configurar contenido de iframe, cambio de imágenes y noticias |  | 2d | 2020-11-13 | 2020-11-18 | 161 | 1d |  |  | Jeisson Gomez | 16h |
| 170 | 5.9.3.2 | Desarrollo de servicio rest guardar y actualizar los cambios de contenido |  | 1d | 2020-11-12 | 2020-11-12 | 157 | 1d | 0d |  | Cristhopher Barreto | 8h |
| 171 | 5.9.3.3 | Desarrollo que consulte los contenidos disponibles para la aplicación móvil |  | 1d | 2020-11-13 | 2020-11-13 | 170 | 1d | 0d |  | Cristhopher Barreto | 8h |
| 172 | 5.9.3.4 | Pruebas | manual | 1d? | 2020-11-12 | 2020-11-12 |  |  |  |  |  |  |
| 173 | 5.10 | **Perfil de usuario** |  | 5d | 2020-11-10 | 2020-11-18 |  | 1d |  |  |  | 16h |
| 174 | 5.10.1 | **Listado de experiencias redimidas** |  | 5d | 2020-11-10 | 2020-11-18 |  | 1d |  |  |  | 16h |
| 175 | 5.10.1.1 | Desarrollo de modulo que permita la consulta de experiencias redimidas |  | 0.5d | 2020-11-10 | 2020-11-10 | 166 | 5.5d |  |  | David Lamprea | 4h |
| 176 | 5.10.1.2 | Desarrollo de servicio rest para la consulta de experiencias redimidas por usuario |  | 0.5d | 2020-11-17 | 2020-11-17 | 171 | 1d | 0d | start no earlier than 2020-10-19 | Cristhopher Barreto | 4h |
| 177 | 5.10.1.3 | Pruebas |  | 1d | 2020-11-17 | 2020-11-18 | 176 | 1d |  |  | Cristhopher Barreto | 8h |
| 178 | 6 | **Documentación Web APP** |  | 4d | 2020-11-19 | 2020-11-25 |  | 4d |  |  |  |  |
| 179 | 6.1 | Documentación Web APP |  | 4d | 2020-11-19 | 2020-11-25 | 69 | 4d |  |  |  |  |
| 180 | 7 | **Soporte WEB APP** |  | 23.5d | 2020-10-27 | 2020-12-01 |  | 0d |  |  |  |  |
| 181 | 7.1 | Soporte de despliegue y Bugs |  | 8d | 2020-11-19 | 2020-12-01 | 69 | 0d |  |  |  |  |
