# Programación de Tareas

Schedule from MS Project, 2020-09-01 to 2020-11-10.

## Calendars

- Estándar: Mon-Fri 09:00-13:00, 15:00-19:00; Sat-Sun off. Exceptions (off unless hours are given): 2020-10-12, 2020-11-02.

## Resources

| Resource |
| --- |
| David Lamprea |
| Jeisson Gomez |
| Otro Desarrollador |
| Cristhopher Barreto |

## Schedule

| ID | WBS | Task | Duration | Start | Finish | Predecessors | Total slack | Free slack | Constraint | Resources | Work |
| --- | --- | --- | --- | --- | --- | --- | --- | --- | --- | --- | --- |
| 1 | 1 | **MVP** | 12d | 2020-09-01 | 2020-09-16 |  | 0d |  |  |  | 300h |
| 2 | 1.1 | **Waiting List** | 4d | 2020-09-01 | 2020-09-04 |  | 0d |  |  |  | 48h |
| 3 | 1.1.1 | **Usuario - Formulario de registro** | 3d | 2020-09-01 | 2020-09-03 |  | 0d |  |  |  | 32h |
| 4 | 1.1.1.1 | Desarrollo de formulario para registro de usuarios y validación para edad no permitida | 2d | 2020-09-01 | 2020-09-02 |  | 1.5d | 0d |  | Jeisson Gomez | 16h |
| 5 | 1.1.1.2 | Desarrollo de servicio Rest para almacenar los usuarios a registrar con la validación de edad | 1d | 2020-09-01 | 2020-09-01 |  | 0d |  |  | David Lamprea | 8h |
| 6 | 1.1.1.3 | Pruebas | 1d | 2020-09-03 | 2020-09-03 | 4 | 9d |  |  | Cristhopher Barreto | 8h |
| 7 | 1.1.2 | **Usuario - Age gate** | 2d | 2020-09-03 | 2020-09-04 |  | 1.5d |  |  |  | 16h |
| 8 | 1.1.2.1 | Desarrollo de componente que permita ingresar la fecha de nacimiento validando la mayoría de edad para poder continuar a la pagina | 1d | 2020-09-03 | 2020-09-03 | 4 | 1.5d | 0d | start no earlier than 2020-09-01 | Jeisson Gomez | 8h |
| 9 | 1.1.2.2 | Pruebas | 1d | 2020-09-04 | 2020-09-04 | 8 | 8d |  |  | Cristhopher Barreto | 8h |
| 10 | 1.2 | **Waiting List - Administrativo** | 6d | 2020-09-02 | 2020-09-09 |  | 0d |  |  |  | 64h |
| 11 | 1.2.1 | **Administrativo - Formulario de activación de usuarios en espera** | 6d | 2020-09-02 | 2020-09-09 |  | 0d |  |  |  | 64h |
| 12 | 1.2.1.1 | Desarrollo de formulario para activar usuarios | 2d | 2020-09-04 | 2020-09-07 | 8 | 1.5d | 0d | start no earlier than 2020-09-02 | Jeisson Gomez | 16h |
| 13 | 1.2.1.2 | Desarrollo de servicio rest para consultar los usuarios registrados | 1d | 2020-09-02 | 2020-09-02 | 5 | 0d |  | start no earlier than 2020-08-31 | David Lamprea | 8h |
| 14 | 1.2.1.3 | Desarrollo de activación de usuarios y gestor de correo, envió de correos electrónicos masivos | 2d | 2020-09-03 | 2020-09-04 | 13 | 0d |  | start no earlier than 2020-09-01 | David Lamprea | 16h |
| 15 | 1.2.1.4 | Desarrollo código generación de códigos de acceso | 1d | 2020-09-07 | 2020-09-07 | 14 | 0d |  | start no earlier than 2020-09-02 | David Lamprea | 8h |
| 16 | 1.2.1.5 | Pruebas | 2d | 2020-09-08 | 2020-09-09 | 12 | 5d |  |  | Cristhopher Barreto | 16h |
| 17 | 1.3 | **Login y Registro** | 8.5d | 2020-09-01 | 2020-09-11 |  | 3.5d |  |  |  | 100h |
| 18 | 1.3.1 | **Usuario - Registro de usuarios** | 1d | 2020-09-08 | 2020-09-08 |  | 0d |  |  |  | 16h |
| 19 | 1.3.1.1 | Pantalla de registro de usuarios | 1d | 2020-09-08 | 2020-09-08 | 15 | 1d | 0d |  | Otro Desarrollador | 8h |
| 20 | 1.3.1.2 | Servicio para registrar datos de usuario en el modulo de usuarios de drupal con roll de cliente | 1d | 2020-09-08 | 2020-09-08 | 15 | 0d |  |  | David Lamprea | 8h |
| 21 | 1.3.2 | **Login** | 7.5d | 2020-09-01 | 2020-09-10 |  | 4.5d |  |  |  | 40h |
| 22 | 1.3.2.1 | **Usuario - Login con Facebook** | 0.5d | 2020-09-09 | 2020-09-09 |  | 0d |  |  |  | 8h |
| 23 | 1.3.2.1.1 | Botón de inicio de sesión con Facebook | 0.5d | 2020-09-09 | 2020-09-09 | 19 | 1d | 0d |  | Otro Desarrollador | 4h |
| 24 | 1.3.2.1.2 | Servicio validación con Facebook | 0.5d | 2020-09-09 | 2020-09-09 | 20 | 0d |  |  | David Lamprea | 4h |

| ID | WBS | Task | Duration | Start | Finish | Predecessors | Total slack | Free slack | Constraint | Resources | Work |
| --- | --- | --- | --- | --- | --- | --- | --- | --- | --- | --- | --- |
| 25 | 1.3.2.2 | **Usuario - Login** | 0.5d | 2020-09-09 | 2020-09-09 |  | 0d |  |  |  | 8h |
| 26 | 1.3.2.2.1 | Desarrollo de servicio rest para consultar las credenciales de usuario y retorno de estado miembro activo | 0.5d | 2020-09-09 | 2020-09-09 | 24 | 0d |  |  | David Lamprea | 4h |
| 27 | 1.3.2.2.2 | Desarrollo pantalla para el ingreso de datos para inicio de sesión | 0.5d | 2020-09-09 | 2020-09-09 | 23 | 1d | 0d |  | Otro Desarrollador | 4h |
| 28 | 1.3.2.3 | **Usuario - Login con Google** | 0.5d | 2020-09-10 | 2020-09-10 |  | 0d |  |  |  | 8h |
| 29 | 1.3.2.3.1 | Botón de inicio de sesión con google | 0.5d | 2020-09-10 | 2020-09-10 | 27 | 1d | 0d |  | Otro Desarrollador | 4h |
| 30 | 1.3.2.3.2 | Servicio validación con Google | 0.5d | 2020-09-10 | 2020-09-10 | 26 | 0d |  |  | David Lamprea | 4h |
| 31 | 1.3.2.4 | Pruebas | 2d | 2020-09-01 | 2020-09-02 |  | 10d |  |  | Cristhopher Barreto | 16h |
| 32 | 1.3.3 | **Usuario - Recuperar contraseña** | 2d | 2020-09-08 | 2020-09-09 |  | 1.5d |  |  |  | 16h |
| 33 | 1.3.3.1 | Desarrollo de componente que permita la recuperación de contraseña | 1d | 2020-09-08 | 2020-09-08 | 12 | 1.5d | 0d |  | Jeisson Gomez | 8h |
| 34 | 1.3.3.2 | Desarrollo de servicio rest que permita recuperar contraseña | 1d | 2020-09-09 | 2020-09-09 | 33 | 1.5d | 0d |  | Jeisson Gomez | 8h |
| 35 | 1.3.4 | Pruebas | 1d | 2020-09-01 | 2020-09-01 |  | 11d |  |  | Cristhopher Barreto | 8h |
| 36 | 1.3.5 | **Administrativo - Integración con directorio activo** | 1d | 2020-09-10 | 2020-09-11 |  | 0d |  |  |  | 16h |
| 37 | 1.3.5.1 | Desarrollo servicio que consulte el directorio activo con el nombre de usuario y password. Rol | 1d | 2020-09-10 | 2020-09-11 | 30 | 0d |  |  | David Lamprea | 8h |
| 38 | 1.3.5.2 | Desarrollo modulo para acceso de la pantalla administrativo | 1d | 2020-09-10 | 2020-09-11 | 29 | 1d | 0d |  | Otro Desarrollador | 8h |
| 39 | 1.3.6 | Pruebas | 0.5d | 2020-09-01 | 2020-09-01 |  | 11.5d |  |  | Cristhopher Barreto | 4h |
| 40 | 1.4 | **Perfil de usuario** | 12d | 2020-09-01 | 2020-09-16 |  | 0d |  |  |  | 88h |
| 41 | 1.4.1 | **Usuario - Verificación usuario Miembro activo** | 0.5d | 2020-09-10 | 2020-09-10 |  | 1.5d |  |  |  | 4h |
| 42 | 1.4.1.1 | componente que permita visualizar el estado de miembro activo | 0.5d | 2020-09-10 | 2020-09-10 | 34 | 1.5d | 0.5d |  | Jeisson Gomez | 4h |
| 43 | 1.4.2 | **Usuario - Cambio de contraseña** | 9.5d | 2020-09-01 | 2020-09-14 |  | 2.5d |  |  |  | 16h |
| 44 | 1.4.2.1 | Desarrollo de componente que permita realizar el cambio de la contraseña | 1d | 2020-09-11 | 2020-09-14 | 37 | 0d |  |  | David Lamprea | 8h |
| 45 | 1.4.2.2 | Desarrollo de servicio rest que permita actualizar la contraseña del usuario | 0.5d | 2020-09-11 | 2020-09-11 | 38 | 1d | 0d |  | Otro Desarrollador | 4h |
| 46 | 1.4.2.3 | Pruebas | 0.5d | 2020-09-01 | 2020-09-01 |  | 11.5d |  |  | Cristhopher Barreto | 4h |
| 47 | 1.4.3 | **Usuario - Datos de contacto** | 10.5d | 2020-09-01 | 2020-09-15 |  | 1.5d |  |  |  | 40h |
| 48 | 1.4.3.1 | Desarrollo de modulo que permita visualizar la información básica del usuario y formulario de actualización de datos | 2d | 2020-09-11 | 2020-09-14 | 42 | 1d | 0d | start no earlier than 2020-09-11 | Jeisson Gomez | 16h |
| 49 | 1.4.3.2 | Desarrollo servicio rest para consulta de datos personales | 1d | 2020-09-14 | 2020-09-15 | 44 | 0d |  |  | David Lamprea | 8h |
| 50 | 1.4.3.3 | Desarrollo de servicio rest para actualización de datos personales | 1d | 2020-09-14 | 2020-09-14 | 45 | 1d | 0d |  | Otro Desarrollador | 8h |
| 51 | 1.4.3.4 | Pruebas | 1d | 2020-09-01 | 2020-09-01 |  | 11d |  |  | Cristhopher Barreto | 8h |

| ID | WBS | Task | Duration | Start | Finish | Predecessors | Total slack | Free slack | Resources | Work |
| --- | --- | --- | --- | --- | --- | --- | --- | --- | --- | --- |
| 52 | 1.4.4 | **Experiencias** | 2d | 2020-09-15 | 2020-09-16 |  | 0d |  |  | 28h |
| 53 | 1.4.4.1 | **Usuario - Listado de experiencias activas** | 1d | 2020-09-15 | 2020-09-15 |  | 0.5d |  |  | 20h |
| 54 | 1.4.4.1.1 | Desarrollo de modulo para mostrar las experiencias activas y formulario de inscripción | 1d | 2020-09-15 | 2020-09-15 | 48 | 1d |  | Jeisson Gomez | 8h |
| 55 | 1.4.4.1.2 | Desarrollo de servicio rest para consultar las experiencias activas | 0.5d | 2020-09-15 | 2020-09-15 | 49 | 0d |  | David Lamprea | 4h |
| 56 | 1.4.4.1.3 | Desarrollo de servicio rest para registro de datos de usuario para experiencias | 1d | 2020-09-15 | 2020-09-15 | 50 | 1d |  | Otro Desarrollador | 8h |
| 57 | 1.4.4.2 | Pruebas | 1d | 2020-09-16 | 2020-09-16 | 55 | 0d |  | Cristhopher Barreto | 8h |
| 58 | 2 | **Documentación MVP** | 3d | 2020-09-17 | 2020-09-21 | 1 | 34d |  |  |  |
| 59 | 2.1 | Documentación de entrega MVP | 3d | 2020-09-17 | 2020-09-21 |  | 34d |  |  |  |
| 60 | 3 | **Soporte MVP** | 5d | 2020-09-17 | 2020-09-23 |  | 0d |  |  |  |
| 61 | 3.1 | Soporte de despliegue y Bugs | 5d | 2020-09-17 | 2020-09-23 | 1 | 0d |  |  |  |
| 62 | 4 | **WEB APP** | 24d | 2020-09-24 | 2020-10-28 | 60 | 0d |  |  | 548h |
| 63 | 4.1 | **Experiencias** | 6d | 2020-09-24 | 2020-10-01 |  | 0d |  |  | 132h |
| 64 | 4.1.1 | **Usuario - Histórico de experiencias aplicadas** | 1.5d | 2020-09-24 | 2020-09-25 |  | 2d |  |  | 12h |
| 65 | 4.1.1.1 | Desarrollo de modulo que muestre las experiencias aplicadas por el usuario registrado | 1d | 2020-09-24 | 2020-09-24 | 54 | 2d | 0d | Jeisson Gomez | 8h |
| 66 | 4.1.1.2 | Desarrollo de servicio rest para la consulta de experiencias aplicadas por el usuario | 0.5d | 2020-09-25 | 2020-09-25 | 65 | 2d | 0d | Jeisson Gomez | 4h |
| 67 | 4.1.2 | **Usuario - Georreferenciación para eventos** | 2d | 2020-09-24 | 2020-09-25 |  | 0d |  |  | 32h |
| 68 | 4.1.2.1 | Desarrollo de modulo que permita mostrar la geolocalización configurada para el evento | 2d | 2020-09-24 | 2020-09-25 | 55 | 1.5d | 0d | David Lamprea | 16h |
| 69 | 4.1.2.2 | Desarrollo servicio rest para consultar los eventos activos y su georreferenciación | 2d | 2020-09-24 | 2020-09-25 | 56 | 0d |  | Otro Desarrollador | 16h |
| 70 | 4.1.3 | **Administrativo - Creación de experiencias** | 2.5d | 2020-09-25 | 2020-09-29 |  | 0.5d |  |  | 28h |
| 71 | 4.1.3.1 | Desarrollo pantalla con resumen de experiencias y formulario de creación de nueva experiencia | 2d | 2020-09-28 | 2020-09-29 | 68 | 1.5d | 0d | David Lamprea | 16h |
| 72 | 4.1.3.2 | Desarrollo de servicio rest para consultar las experiencias creadas | 0.5d | 2020-09-25 | 2020-09-25 | 66 | 2d | 0d | Jeisson Gomez | 4h |
| 73 | 4.1.3.3 | Desarrollo de servicio rest para creación y actualización de experiencias | 1d | 2020-09-28 | 2020-09-28 | 69 | 0d |  | Otro Desarrollador | 8h |
| 74 | 4.1.4 | **Administrativo - Creación de eventos** | 2.5d | 2020-09-28 | 2020-09-30 |  | 1d |  |  | 28h |
| 75 | 4.1.4.1 | Desarrollo de modulo que permita la creación de eventos | 2d | 2020-09-28 | 2020-09-30 | 76 | 2d | 0d | Jeisson Gomez | 16h |
| 76 | 4.1.4.2 | Desarrollo de servicio rest que consulte los eventos configurados | 0.5d | 2020-09-28 | 2020-09-28 | 72 | 2d | 0d | Jeisson Gomez | 4h |
| 77 | 4.1.4.3 | Desarrollo de servicio rest que inserte o actualice los eventos creados | 1d | 2020-09-29 | 2020-09-29 | 73 | 0d |  | Otro Desarrollador | 8h |

| ID | WBS | Task | Duration | Start | Finish | Predecessors | Total slack | Free slack | Resources | Work |
| --- | --- | --- | --- | --- | --- | --- | --- | --- | --- | --- |
| 78 | 4.1.5 | **Configuración Georreferenciación para eventos** | 2d | 2020-09-30 | 2020-10-01 |  | 0d |  |  | 32h |
| 79 | 4.1.5.1 | Desarrollo de modulo que permita mostrar la geolocalización configurada para el evento | 2d | 2020-09-30 | 2020-10-01 | 71 | 1.5d | 0d | David Lamprea | 16h |
| 80 | 4.1.5.2 | Desarrollo de formulario que permita guardar las configuraciones coordenadas de geolocalización para los eventos | 1d | 2020-09-30 | 2020-09-30 | 77 | 0d |  | Otro Desarrollador | 8h |
| 81 | 4.1.5.3 | Desarrollo de servicio rest que permita consultar las geolocalizaciones configuradas para el evento | 1d | 2020-09-30 | 2020-10-01 | 75 | 2d | 0d | Jeisson Gomez | 8h |
| 82 | 4.2 | **MGM** | 3.5d | 2020-10-01 | 2020-10-06 |  | 0d |  |  | 68h |
| 83 | 4.2.1 | **Usuario - Registro email de usuarios referidos (10)** | 2d | 2020-10-01 | 2020-10-02 |  | 0d |  |  | 32h |
| 84 | 4.2.1.1 | Desarrollo formulario de registros de referidos | 2d | 2020-10-01 | 2020-10-02 | 80 | 0d |  | Otro Desarrollador | 16h |
| 85 | 4.2.1.2 | Desarrollo de gestor de correo, envió de correos electrónicos masivos | 1d | 2020-10-02 | 2020-10-02 | 79 | 1.5d | 0d | David Lamprea | 8h |
| 86 | 4.2.1.3 | Desarrollo rest de consulta de usuarios ya referidos | 0.5d | 2020-10-01 | 2020-10-01 | 81 | 2d | 0d | Jeisson Gomez | 4h |
| 87 | 4.2.1.4 | Desarrollo generación códigos de acceso | 0.5d | 2020-10-02 | 2020-10-02 | 86 | 2d | 0d | Jeisson Gomez | 4h |
| 88 | 4.2.2 | **Usuario - Registro con código para los usuarios referidos** | 1.5d | 2020-10-05 | 2020-10-06 |  | 1.5d |  |  | 12h |
| 89 | 4.2.2.1 | Desarrollo modulo registro con código de usuario referido | 1d | 2020-10-05 | 2020-10-05 | 85 | 1.5d | 0d | David Lamprea | 8h |
| 90 | 4.2.2.2 | Desarrollo servicio rest para validar el código del usuario referido | 0.5d | 2020-10-06 | 2020-10-06 | 89 | 1.5d | 0d | David Lamprea | 4h |
| 91 | 4.2.3 | **Administrativo - Carga de códigos Rappi** | 2d | 2020-10-02 | 2020-10-06 |  | 0.5d |  |  | 24h |
| 92 | 4.2.3.1 | Desarrollo pantalla carga de códigos Rappi | 2d | 2020-10-02 | 2020-10-06 | 87 | 2d | 0d | Jeisson Gomez | 16h |
| 93 | 4.2.3.2 | Desarrollo servicio rest para registrar códigos rappi | 1d | 2020-10-05 | 2020-10-05 | 84 | 0d |  | Otro Desarrollador | 8h |
| 94 | 4.3 | **Experiencia platino** | 2.5d | 2020-10-06 | 2020-10-08 |  | 0d |  |  | 40h |
| 95 | 4.3.1 | **Usuario - Experiencia incógnita** | 1.5d | 2020-10-06 | 2020-10-07 |  | 2d |  |  | 12h |
| 96 | 4.3.1.1 | Desarrollo de modulo que se mostrara en cuanto se active la experiencia platino | 1d | 2020-10-06 | 2020-10-07 | 92 | 2d | 0d | Jeisson Gomez | 8h |
| 97 | 4.3.1.2 | Desarrollo de servicio rest para consultar experiencia platino | 0.5d | 2020-10-07 | 2020-10-07 | 96 | 2d | 0d | Jeisson Gomez | 4h |
| 98 | 4.3.2 | **Administrativo - Creación de experiencia platino y condiciones para redimir (Que usuarios)** | 2.5d | 2020-10-06 | 2020-10-08 |  | 0d |  |  | 28h |
| 99 | 4.3.2.1 | Desarrollo formulario para la creación de experiencias platinos por nivel | 2d | 2020-10-06 | 2020-10-08 | 90 | 1.5d | 0d | David Lamprea | 16h |
| 100 | 4.3.2.2 | Desarrollo de servicio rest para obtener experiencias platinos configuradas | 0.5d | 2020-10-06 | 2020-10-06 | 93 | 0d |  | Otro Desarrollador | 4h |
| 101 | 4.3.2.3 | Desarrollo de servicio rest para insertar o actualizar experiencias planitos por nivel | 1d | 2020-10-06 | 2020-10-07 | 100 | 0d |  | Otro Desarrollador | 8h |

| ID | WBS | Task | Duration | Start | Finish | Predecessors | Total slack | Free slack | Resources | Work |
| --- | --- | --- | --- | --- | --- | --- | --- | --- | --- | --- |
| 102 | 4.4 | **Redención de códigos** | 12.5d | 2020-09-24 | 2020-10-13 |  | 9.5d |  |  | 52h |
| 103 | 4.4.1 | **Usuario - Formulario para redención de códigos** | 2d | 2020-10-08 | 2020-10-09 |  | 2d |  |  | 16h |
| 104 | 4.4.1.1 | Desarrollo de modulo para la captura de códigos a inscribir, mensaje de código usado, pregunta de tiene más códigos y confirmación de la acción | 1d | 2020-10-08 | 2020-10-08 | 97 | 2d | 0d | Jeisson Gomez | 8h |
| 105 | 4.4.1.2 | Desarrollo módulo de recepción de códigos y validación de código a registrar | 1d | 2020-10-09 | 2020-10-09 | 104 | 2d | 0d | Jeisson Gomez | 8h |
| 106 | 4.4.2 | **Usuario - Historial de códigos usados** | 1.5d | 2020-10-07 | 2020-10-08 |  | 0d |  |  | 12h |
| 107 | 4.4.2.1 | Desarrollo modulo para mostrar el historial de códigos de usuarios | 1d | 2020-10-07 | 2020-10-08 | 101 | 0d |  | Otro Desarrollador | 8h |
| 108 | 4.4.2.2 | Desarrollo de servicio rest para consulta de códigos usados por usuario | 0.5d | 2020-10-08 | 2020-10-08 | 107 | 0d |  | Otro Desarrollador | 4h |
| 109 | 4.4.3 | **Administrativo - Generación de códigos y/o carga** | 12.5d | 2020-09-24 | 2020-10-13 |  | 11d |  |  | 24h |
| 110 | 4.4.3.1 | Desarrollo formulario carga de códigos usados | 2d | 2020-10-08 | 2020-10-13 | 99 | 1.5d | 0d | David Lamprea | 16h |
| 111 | 4.4.3.2 | Desarrollo de servicio rest para consultar los códigos registrados s | 1d | 2020-10-09 | 2020-10-09 | 108 | 0d |  | Otro Desarrollador | 8h |
| 112 | 4.4.3.3 | Desarrollo servicio rest para cargar códigos a la base de datos | 1d | 2020-09-24 | 2020-09-24 |  | 23d |  |  |  |
| 113 | 4.5 | **Auditoria** | 3d | 2020-10-13 | 2020-10-16 |  | 1.5d |  |  | 24h |
| 114 | 4.5.1 | **Registro de acciones y eventos ejecutados por el usuario** | 3d | 2020-10-13 | 2020-10-16 |  | 1.5d |  |  | 24h |
| 115 | 4.5.1.1 | <Tarea nueva> | 3d | 2020-10-13 | 2020-10-16 | 110 | 1.5d | 0d | David Lamprea | 24h |
| 116 | 4.6 | **Parametrizar** | 1d | 2020-10-13 | 2020-10-13 |  | 2d |  |  | 8h |
| 117 | 4.6.1 | Administrativo - Cantidad de intentos de registro código | 1d | 2020-10-13 | 2020-10-13 | 105 | 2d | 0d | Jeisson Gomez | 8h |
| 118 | 4.7 | **Notificaciones Push** | 4.5d | 2020-10-13 | 2020-10-19 |  | 0d |  |  | 64h |
| 119 | 4.7.1 | **Usuario - Funcionalidad de mostrar notificaciones push** | 3d | 2020-10-13 | 2020-10-15 |  | 0d |  |  | 32h |
| 120 | 4.7.1.1 | Desarrollo de función para mostrar las notificaciones Push | 2d | 2020-10-14 | 2020-10-15 | 117 | 2d | 0d | Jeisson Gomez | 16h |
| 121 | 4.7.1.2 | Desarrollo y/o integración con servidor de notificaciones push | 2d | 2020-10-13 | 2020-10-14 | 111 | 0d |  | Otro Desarrollador | 16h |
| 122 | 4.7.2 | **Administrativo - Crear notificaciones push** | 2.5d | 2020-10-15 | 2020-10-19 |  | 0d |  |  | 32h |
| 123 | 4.7.2.1 | Desarrollo de modulo que permita la configuración de notificaciones Push | 2d | 2020-10-15 | 2020-10-16 | 121 | 0d |  | Otro Desarrollador | 16h |
| 124 | 4.7.2.2 | Desarrollo de servicio Rest que consulte el histórico de notificaciones push enviadas | 1d | 2020-10-16 | 2020-10-16 | 120 | 2d | 0d | Jeisson Gomez | 8h |
| 125 | 4.7.2.3 | Desarrollo de servicio Rest para crear nueva notificación push | 1d | 2020-10-16 | 2020-10-19 | 115 | 1.5d | 0d | David Lamprea | 8h |

| ID | WBS | Task | Duration | Start | Finish | Predecessors | Total slack | Free slack | Resources | Work |
| --- | --- | --- | --- | --- | --- | --- | --- | --- | --- | --- |
| 126 | 4.8 | **Integración** | 4d | 2020-10-19 | 2020-10-22 |  | 0d |  |  | 64h |
| 127 | 4.8.1 | **Usuario - Escaneo de código de barras y QR** | 2.5d | 2020-10-19 | 2020-10-21 |  | 1.5d |  |  | 32h |
| 128 | 4.8.1.1 | Desarrollo de modulo que permita la lectura de códigos de barra y QR | 2d | 2020-10-19 | 2020-10-20 | 124 | 2d | 0d | Jeisson Gomez | 16h |
| 129 | 4.8.1.2 | Servicio rest que permita cargar las imágenes de códigos de barras y códigos QR | 2d | 2020-10-19 | 2020-10-21 | 125 | 1.5d | 0d | David Lamprea | 16h |
| 130 | 4.8.2 | **Administrativo - Aprobación de imágenes** | 4d | 2020-10-19 | 2020-10-22 |  | 0d |  |  | 32h |
| 131 | 4.8.2.1 | Desarrollo de modulo que permita autorizar o negar las solicitudes de usuarios para los códigos | 2d | 2020-10-19 | 2020-10-20 | 123 | 0d |  | Otro Desarrollador | 16h |
| 132 | 4.8.2.2 | Desarrollo de servicio rest que permita obtener las solicitudes de los usuarios | 1d | 2020-10-21 | 2020-10-21 | 131 | 0d |  | Otro Desarrollador | 8h |
| 133 | 4.8.2.3 | Desarrollo de servicio rest para actualizar el estado de las solicitudes del usuario y notificación al usuario de la decisión | 1d | 2020-10-22 | 2020-10-22 | 132 | 0d |  | Otro Desarrollador | 8h |
| 134 | 4.9 | **Home (Banner)** | 4d | 2020-10-21 | 2020-10-26 |  | 2d |  |  | 72h |
| 135 | 4.9.1 | **Usuario - Consulta de noticias** | 2d | 2020-10-21 | 2020-10-22 |  | 2d |  |  | 24h |
| 136 | 4.9.1.1 | Desarrollo de modulo que permita mostrar un iframe de una página deseada, cambio de contenido como imágenes y videos | 2d | 2020-10-21 | 2020-10-22 | 128 | 2d | 0d | Jeisson Gomez | 16h |
| 137 | 4.9.1.2 | Desarrollo de servicio rest que contenga las noticias | 1d | 2020-10-21 | 2020-10-22 | 129 | 1.5d | 0d | David Lamprea | 8h |
| 138 | 4.9.2 | **Usuario - Consulta de contenido (Imagen, video o pagina)** | 2d | 2020-10-22 | 2020-10-26 |  | 1.5d |  |  | 16h |
| 139 | 4.9.2.1 | Desarrollo de modulo que permita visualizar las noticias | 1d | 2020-10-22 | 2020-10-23 | 137 | 1.5d | 0d | David Lamprea | 8h |
| 140 | 4.9.2.2 | Desarrollo servicio rest para la consulta de noticias configuradas | 1d | 2020-10-23 | 2020-10-26 | 139 | 1.5d | 0d | David Lamprea | 8h |
| 141 | 4.9.3 | **Administrativo - Actualización de noticias y contenido streaming** | 2d | 2020-10-23 | 2020-10-26 |  | 0d |  |  | 32h |
| 142 | 4.9.3.1 | Desarrollo de modulo que permita configurar contenido de iframe, cambio de imágenes y noticias | 2d | 2020-10-23 | 2020-10-26 | 136 | 2d |  | Jeisson Gomez | 16h |
| 143 | 4.9.3.2 | Desarrollo de servicio rest guardar y actualizar los cambios de contenido | 1d | 2020-10-23 | 2020-10-23 | 133 | 0d |  | Otro Desarrollador | 8h |
| 144 | 4.9.3.3 | Desarrollo que consulte los contenidos disponibles para la aplicación móvil | 1d | 2020-10-26 | 2020-10-26 | 143 | 0d |  | Otro Desarrollador | 8h |
| 145 | 4.10 | **Perfil de usuario** | 2.5d | 2020-10-26 | 2020-10-28 |  | 0d |  |  | 24h |
| 146 | 4.10.1 | **Listado de experiencias redimidas** | 1.5d | 2020-10-26 | 2020-10-27 |  | 0.5d |  |  | 16h |
| 147 | 4.10.1.1 | Desarrollo de modulo que permita la consulta de experiencias redimidas | 1d | 2020-10-26 | 2020-10-27 | 140 | 1.5d |  | David Lamprea | 8h |
| 148 | 4.10.1.2 | Desarrollo de servicio rest para la consulta de experiencias redimidas por usuario | 1d | 2020-10-27 | 2020-10-27 | 144 | 0d |  | Otro Desarrollador | 8h |
| 149 | 4.10.2 | Pruebas | 1d | 2020-10-28 | 2020-10-28 | 148 | 0d |  | Cristhopher Barreto | 8h |

| ID | WBS | Task | Duration | Start | Finish | Predecessors | Total slack |
| --- | --- | --- | --- | --- | --- | --- | --- |
| 150 | 5 | **Documentación Web APP** | 4d | 2020-10-29 | 2020-11-04 |  | 4d |
| 151 | 5.1 | Documentación Web APP | 4d | 2020-10-29 | 2020-11-04 | 62 | 4d |
| 152 | 6 | **Soporte WEB APP** | 8d | 2020-10-29 | 2020-11-10 |  | 0d |
| 153 | 6.1 | Soporte de despliegue y Bugs | 8d | 2020-10-29 | 2020-11-10 | 62 | 0d |
